# Gantt_chart

Schedule from MS Project, 2025-03-03 to 2025-10-31.
Augsburg College

## Calendars

- Standard: Mon-Fri 08:00-12:00, 13:00-17:00; Sat-Sun off. Exceptions (off unless hours are given): 2025-04-05 to 2025-04-06 08:00-12:00, 13:00-17:00, 2025-04-12 08:00-12:00, 13:00-17:00, 2025-06-07 08:00-12:00, 13:00-17:00.

## Resources

| Resource |
| --- |
| Thomas Hugh Robinson |
| Nathan Quai Hoi |
| Zafar Afrad |
| Larissa Goh |
| Charmi Patel |
| Kylie Afable |
| Win Phyo |

## Schedule

| ID | WBS | Task | Type | Duration | Start | Finish | Predecessors | Total slack | Free slack | Constraint |
| --- | --- | --- | --- | --- | --- | --- | --- | --- | --- | --- |
| 1 | 1 | **Requirement Analysis** |  | 32d? | 2025-03-03 | 2025-04-11 |  |  |  |  |
| 2 | 1.1 | **Entry Criteria** |  | 3d | 2025-03-03 | 2025-03-05 |  |  |  |  |
| 3 | 1.1.1 | Team Kick-Off Meeting Agenda |  | 1d | 2025-03-03 | 2025-03-03 |  | 3d | 0d |  |
| 4 | 1.1.2 | Team-Client Kick-Off Meeting Agenda |  | 1d | 2025-03-03 | 2025-03-03 |  | 4d | 2d |  |
| 5 | 1.1.3 | Team Contract |  | 1d | 2025-03-03 | 2025-03-03 |  | 4d |  |  |
| 6 | 1.1.4 | Meeting Minutes (Kick-Off Meetings) |  | 1d | 2025-03-04 | 2025-03-04 | 3 | 3d |  |  |
| 7 | 1.2 | **Develop Project Proposal** |  | 29d? | 2025-03-06 | 2025-04-11 | 2 |  |  |  |
| 8 | 1.2.1 | Communication Stakeholder Register |  | 1d | 2025-03-06 | 2025-03-06 |  | 26d | 1d |  |
| 9 | 1.2.2 | Project Charter |  | 1d | 2025-03-06 | 2025-03-06 |  | 28d |  |  |
| 10 | 1.2.3 | Client Contract |  | 1d | 2025-03-19 | 2025-03-19 |  | 60d |  | start no earlier than 2025-03-19 |
| 11 | 1.2.4 | Meeting Minutes (Team & Client) |  | 1d | 2025-03-06 | 2025-03-06 | 4 | 26d | 1d |  |
| 12 | 1.2.5 | **Develop Project Plans** |  | 27d? | 2025-03-10 | 2025-04-11 |  |  |  |  |
| 13 | 1.2.5.1 | Stakeholder Management Strategy |  | 1d | 2025-03-10 | 2025-03-10 | 8 | 26d |  |  |
| 14 | 1.2.5.2 | Risk Register |  | 5d | 2025-03-10 | 2025-03-14 |  | 22d |  |  |
| 15 | 1.2.5.3 | Issue Log |  | 5d | 2025-03-10 | 2025-03-14 |  | 22d |  |  |
| 16 | 1.2.5.4 | Communication Management Plan |  | 2d | 2025-03-10 | 2025-03-11 | 8 | 25d |  |  |
| 17 | 1.2.5.5 | Change Management Plan |  | 2d | 2025-03-12 | 2025-03-13 |  | 64d |  | start no earlier than 2025-03-12 |
| 18 | 1.2.5.6 | Scope Statement |  | 2d | 2025-03-13 | 2025-03-14 |  | 63d |  | start no earlier than 2025-03-13 |
| 19 | 1.2.5.7 | Network Diagram |  | 2d | 2025-03-10 | 2025-03-11 | 11 | 25d |  |  |
| 20 | 1.2.5.8 | Requirement Traceability Matrix |  | 1d? | 2025-03-10 | 2025-03-10 | 11 | 26d |  |  |
| 21 | 1.2.5.9 | Skills Analysis Matrix |  | 2d | 2025-03-17 | 2025-03-18 |  | 17d | 0d | start no earlier than 2025-03-17 |
| 22 | 1.2.5.10 | Upskilling Plan Schedule |  | 3d | 2025-03-19 | 2025-03-21 | 21 | 17d |  |  |
| 23 | 1.2.5.11 | **Project Schedule** |  | 10d | 2025-03-26 | 2025-04-06 |  |  |  |  |
| 24 | 1.2.5.11.1 | Work Breakdown Structure |  | 4d | 2025-03-26 | 2025-03-31 |  | 6d | 0d |  |
| 25 | 1.2.5.11.2 | Gantt Chart |  | 5d | 2025-04-01 | 2025-04-05 | 24 | 6d |  |  |
| 26 | 1.2.5.12 | Milestone Report |  | 2d | 2025-04-04 | 2025-04-05 |  | 47d |  | start no earlier than 2025-04-04 |
| 27 | 1.2.5.13 | Estimated Cost |  | 4d | 2025-03-31 | 2025-04-03 |  | 49d |  | start no earlier than 2025-03-31 |
| 28 | 1.2.5.14 | Quality Assurance Plan |  | 2d | 2025-03-31 | 2025-04-01 |  | 51d |  | start no earlier than 2025-03-31 |
| 29 | 1.2.5.15 | Project Proposal submission |  | 2d? | 2025-04-05 | 2025-04-06 |  | 46d |  | finish no earlier than 2025-04-06 |
| 30 | 1.2.5.16 | Milestone 1 Project Proposal | milestone | 0d | 2025-04-06 | 2025-04-06 |  | 153d |  | start no earlier than 2025-04-06 |
| 31 | 1.2.5.17 | Project Proposal presentation |  | 10d? | 2025-04-01 | 2025-04-10 |  | 44d |  | finish no earlier than 2025-04-10 |

| ID | WBS | Task | Type | Duration | Start | Finish | Predecessors | Total slack | Free slack | Constraint |
| --- | --- | --- | --- | --- | --- | --- | --- | --- | --- | --- |
| 32 | 1.3 | **Exit Criteria** |  | 2d? | 2025-04-10 | 2025-04-11 |  |  |  |  |
| 33 | 1.3.1 | Client feedback on proposal document |  | 1d | 2025-04-10 | 2025-04-10 |  | 1d | 0d |  |
| 34 | 1.3.2 | Approval of proposal document from client |  | 1d | 2025-04-11 | 2025-04-11 | 33 | 1d |  |  |
| 35 | 2 | **Evaluation Planning** |  | 15d? | 2025-04-14 | 2025-05-02 | 1 |  |  |  |
| 36 | 2.1 | **Entry Criteria** |  | 1d? | 2025-04-14 | 2025-04-14 | 32 |  |  |  |
| 37 | 2.1.1 | Client approval of project proposal |  | 1d? | 2025-04-14 | 2025-04-14 |  | 145d |  | start no earlier than 2025-04-14 |
| 38 | 2.2 | **Researching And Upskilling** |  | 14d? | 2025-04-14 | 2025-05-01 |  |  |  |  |
| 39 | 2.2.1 | Team members upskill for necessary skills |  | 10d | 2025-04-14 | 2025-04-25 |  | 32d |  | start no earlier than 2025-04-14 |
| 40 | 2.2.2 | Network tools (iPerf & D-ITG) |  | 5d | 2025-04-21 | 2025-04-25 |  | 32d |  | start no earlier than 2025-04-21 |
| 41 | 2.3 | Define evaluation scenarios |  | 4d | 2025-04-14 | 2025-04-17 |  | 34d | 0d | start no earlier than 2025-04-14 |
| 42 | 2.4 | Define evaluation environment |  | 4d | 2025-04-18 | 2025-04-23 | 41 | 34d |  | start no earlier than 2025-04-16 |
| 43 | 2.5 | **Exit Criteria** |  | 1d? | 2025-05-01 | 2025-05-01 |  |  |  |  |
| 44 | 2.5.1 | Client and supervisor feedback on evaluation planning |  | 1d? | 2025-05-01 | 2025-05-01 |  | 28d |  | start no earlier than 2025-05-01 |
| 45 | 3 | **Evaluation Case Development** |  | 26d? | 2025-05-02 | 2025-06-06 | 35 |  |  |  |
| 46 | 3.1 | **Entry Criteria** |  | 1d? | 2025-05-02 | 2025-05-02 |  | 26d |  |  |
| 47 | 3.1.1 | Client and supervisor feedback on evaluation planning |  | 1d? | 2025-05-02 | 2025-05-02 |  | 25d |  |  |
| 48 | 3.2 | **Define evaluation scenario** |  | 10d | 2025-05-05 | 2025-05-16 |  |  |  |  |
| 49 | 3.2.1 | Requirement traceability |  | 10d | 2025-05-05 | 2025-05-16 |  | 17d |  | start no earlier than 2025-05-05 |
| 50 | 3.3 | **Exit Criteria** |  | 15d | 2025-05-19 | 2025-06-06 | 48 |  |  |  |
| 51 | 3.3.1 | Review and validate evaluation cases |  | 10d | 2025-05-19 | 2025-05-30 |  | 5d |  |  |
| 52 | 3.3.2 | Validate with client |  | 1d | 2025-06-05 | 2025-06-05 |  | 3d |  | start no earlier than 2025-06-05 |
| 53 | 3.3.3 | Client feedback |  | 1d | 2025-06-05 | 2025-06-05 |  | 3d |  | start no earlier than 2025-06-05 |
| 54 | 3.4 | Milestone Mid Term Review | milestone | 0d | 2025-06-06 | 2025-06-06 |  | 3d |  | start no earlier than 2025-06-06 |
| 55 | 4 | **Evaluation Environment Setup** |  | 50d? | 2025-06-09 | 2025-08-15 | 45 |  |  |  |
| 56 | 4.1 | **Entry Criteria** |  | 20d? | 2025-06-09 | 2025-07-04 |  |  |  |  |
| 57 | 4.1.1 | Establishment of hardware and software |  | 1d? | 2025-06-09 | 2025-06-09 |  | 104d |  |  |
| 58 | 4.1.2 | Prepare evaluation data |  | 2d | 2025-06-09 | 2025-06-10 |  | 85d | 0d |  |

| ID | WBS | Task | Type | Duration | Start | Finish | Predecessors | Total slack | Free slack | Constraint |
| --- | --- | --- | --- | --- | --- | --- | --- | --- | --- | --- |
| 59 | 4.1.3 | **Configure evaluation environment** |  | 10d | 2025-06-11 | 2025-06-24 | 58 |  |  |  |
| 60 | 4.1.3.1 | Configure two computers as routers |  | 5d | 2025-06-11 | 2025-06-17 |  | 85d | 0d |  |
| 61 | 4.1.3.2 | Configure three separate networks |  | 5d | 2025-06-18 | 2025-06-24 | 60 | 85d | 0d |  |
| 62 | 4.1.4 | Write cases for each scenario |  | 6d | 2025-06-25 | 2025-07-02 | 61 | 85d | 0d | start no earlier than 2025-06-25 |
| 63 | 4.2 | **Exit Criteria** |  | 2d | 2025-07-03 | 2025-07-04 | 62 |  |  |  |
| 64 | 4.2.1 | Fully functional evaluation environment and approved evaluation cases |  | 1d | 2025-07-03 | 2025-07-03 |  | 85d | 0d |  |
| 65 | 4.2.2 | Client feedback |  | 1d | 2025-07-04 | 2025-07-04 | 64 | 85d |  |  |
| 66 | 5 | **Evaluation Execution** |  | 70d? | 2025-07-07 | 2025-10-10 |  |  |  |  |
| 67 | 5.1 | **Entry Criteria** |  | 1d? | 2025-07-07 | 2025-07-07 |  | 69d |  |  |
| 68 | 5.1.1 | **All exit criteria from previous steps** |  | 1d? | 2025-07-07 | 2025-07-07 |  | 69d |  |  |
| 69 | 5.1.1.1 | Evaluation environment is approved and functional |  | 1d? | 2025-07-07 | 2025-07-07 |  | 84d |  |  |
| 70 | 5.2 | **Exit Criteria** |  | 69d? | 2025-07-07 | 2025-10-10 |  | 1d |  |  |
| 71 | 5.2.1 | **All evaluations are performed, and results are documented** |  | 69d? | 2025-07-07 | 2025-10-10 |  | 1d |  |  |
| 72 | 5.2.1.1 | **Conduct a minimum of 10 evaluation runs for each operating system** |  | 12d | 2025-07-07 | 2025-07-22 |  | 51d |  |  |
| 73 | 5.2.1.1.1 | Configure environment |  | 3d | 2025-07-07 | 2025-07-09 |  | 66d | 0d |  |
| 74 | 5.2.1.1.2 | Each evaluation consists of 12 packet sizes |  | 3d | 2025-07-10 | 2025-07-14 | 73 | 66d | 0d |  |
| 75 | 5.2.1.1.3 | Each evaluation will be run on both IPv4 and IPv6 separately |  | 3d | 2025-07-15 | 2025-07-17 | 74 | 66d | 0d |  |
| 76 | 5.2.1.1.4 | Each evaluation will be run on both TCP and UDP separately |  | 3d | 2025-07-18 | 2025-07-22 | 75 | 66d | 0d |  |
| 77 | 5.2.1.2 | Implement evaluation case failure protocol |  | 5d | 2025-07-23 | 2025-07-29 | 76 | 68d |  |  |
| 78 | 5.2.1.3 | Client feedback |  | 1d? | 2025-07-23 | 2025-07-23 | 76 | 72d |  |  |
| 79 | 5.2.1.4 | Execute evaluation cases, scripts, pings |  | 3d | 2025-07-23 | 2025-07-25 | 76 | 66d | 0d |  |
| 80 | 5.2.1.5 | Record and document results for each evaluation run |  | 2d | 2025-07-28 | 2025-07-29 | 79 | 66d | 0d |  |
| 81 | 5.2.1.6 | Analyse performance metrics to determine operating system performance |  | 1d? | 2025-07-30 | 2025-07-30 | 80 | 66d | 0d |  |
| 82 | 5.2.1.7 | Client feedback |  | 1d? | 2025-07-31 | 2025-07-31 | 81 | 66d |  |  |
| 83 | 5.2.1.8 | Milestone 3 – Client Review and Feedback 1 | milestone | 0d | 2025-07-31 | 2025-07-31 |  | 67d |  | start no earlier than 2025-07-31 |
| 84 | 5.2.1.9 | Milestone 4 – Client Review and Feedback 2 | milestone | 0d | 2025-09-05 | 2025-09-05 |  | 41d |  | start no earlier than 2025-09-05 |
| 85 | 5.2.1.10 | Milestone 5 – Client Review and Feedback 3 | milestone | 0d | 2025-10-10 | 2025-10-10 |  | 16d |  | start no earlier than 2025-10-10 |

| ID | WBS | Task | Type | Duration | Start | Finish | Predecessors | Total slack | Constraint |
| --- | --- | --- | --- | --- | --- | --- | --- | --- | --- |
| 86 | 6 | **Evaluation Closure** |  | 15d? | 2025-10-13 | 2025-10-31 | 66 |  |  |
| 87 | 6.1 | **Entry Criteria** |  | 15d | 2025-10-13 | 2025-10-31 |  | 0d |  |
| 88 | 6.1.1 | **Compile and compare results of evaluation** |  | 15d | 2025-10-13 | 2025-10-31 |  | 0d |  |
| 89 | 6.1.1.1 | Analyse performance pattern |  | 3d | 2025-10-13 | 2025-10-15 |  | 0d |  |
| 90 | 6.1.1.2 | Summary of the network performance evaluation |  | 2d | 2025-10-16 | 2025-10-17 | 89 | 0d |  |
| 91 | 6.1.1.3 | Create visualisations and reports |  | 2d | 2025-10-20 | 2025-10-21 | 90 | 0d |  |
| 92 | 6.1.1.4 | Final poster |  | 8d | 2025-10-22 | 2025-10-31 | 91 | 0d | start no earlier than 2025-10-22 |
| 93 | 6.2 | **Exit Criteria** |  | 15d? | 2025-10-13 | 2025-10-31 |  | 0d |  |
| 94 | 6.2.1 | Document closure report |  | 5d | 2025-10-27 | 2025-10-31 |  | 0d | start no earlier than 2025-10-27 |
| 95 | 6.2.2 | Evaluation results and analysis |  | 1d? | 2025-10-13 | 2025-10-13 |  | 14d |  |
| 96 | 6.2.3 | Organise folders for portfolio |  | 5d | 2025-10-20 | 2025-10-24 |  | 5d | start no earlier than 2025-10-20 |
| 97 | 6.2.4 | Client feedback |  | 1d? | 2025-10-30 | 2025-10-30 |  | 1d | start no earlier than 2025-10-30 |
| 98 | 6.2.5 | Milestone 6 Final Poster & Portfolio | milestone | 0d | 2025-10-31 | 2025-10-31 |  | 1d | start no earlier than 2025-10-31 |
